# One Person Software Development Project

Schedule from GanttProject, 2010-01-21 to 2010-10-28, baseline: InitialDraft.
Team Axe, LLC
This is the project plan of the first software creation from Team Axe, LLC. / The project itself will follow the OpenUP software development process, and as such is divided into four phases: Inception, Elaboration, Construction and Transition. The purpose of the project is to create a compelling and well-developed software creation utilizing the resources of only a single developer. / Quarterly progress reports and other information can be viewed at the URL supplied with this document.

## Calendars

- Project calendar: Mon-Sun working.

## Resources

| Resource | Group |
| --- | --- |
| PrjMgr | Project Manager |
| DevMgr | Development Manager |
| ArtMgr | Graphic Design Manager |
| QAMgr | Quality Assurance Manager |
| MktMgr | Marketing Manager |
| Dev | Developer |
| Arch | Architect |
| Art | Graphic Designer |
| QA | Quality Assurance Tester |
| Ed | Editor |
| BA | Business Analyst |
| Con | External Consultant |
| Audio | Audio Engineer |

## Schedule

| ID | WBS | Task | Type | Duration | Start | Finish | Predecessors | Baseline start | Baseline finish | Baseline duration | Baseline 1 start | Baseline 1 finish | Resources |
| --- | --- | --- | --- | --- | --- | --- | --- | --- | --- | --- | --- | --- | --- |
| 1 | 1 | **Inception** |  | 89d | 2010-01-21 | 2010-04-19 |  | 2010-01-21 | 2010-04-19 | 89d | 2010-01-21 | 2010-04-19 | BA [50%]; PrjMgr [50%] |
| 2 | 1.1 | **Project Definition** |  | 13d | 2010-01-21 | 2010-02-02 |  | 2010-01-21 | 2010-02-02 | 13d | 2010-01-21 | 2010-02-02 | BA [10%]; PrjMgr [25%] |
| 3 | 1.1.1 | Project Scope Determination |  | 1d | 2010-01-21 | 2010-01-21 |  | 2010-01-21 | 2010-01-21 | 1d | 2010-01-21 | 2010-01-21 | BA [50%]; MktMgr [10%]; PrjMgr [50%]; DevMgr [25%]; ArtMgr [20%]; QAMgr [10%] |
| 4 | 1.1.2 | Vision Statement |  | 2d | 2010-02-01 | 2010-02-02 | 3 | 2010-02-01 | 2010-02-02 | 2d | 2010-02-01 | 2010-02-02 | BA; MktMgr; PrjMgr; DevMgr |
| 5 | 1.2 | Initial Requirements |  | 12d | 2010-02-10 | 2010-02-21 |  | 2010-02-10 | 2010-02-21 | 12d | 2010-02-10 | 2010-02-21 | BA |
| 6 | 1.3 | Market Research |  | 5d | 2010-02-12 | 2010-02-16 |  |  |  |  | 2010-02-12 | 2010-02-16 | PrjMgr |
| 7 | 1.4 | **Use Case Creation** |  | 19d | 2010-02-12 | 2010-03-02 |  | 2010-02-12 | 2010-03-02 | 19d | 2010-02-12 | 2010-03-02 | BA; PrjMgr |
| 8 | 1.4.1 | Use Case Template Creation |  | 1d | 2010-02-12 | 2010-02-12 |  | 2010-02-12 | 2010-02-12 | 1d | 2010-02-12 | 2010-02-12 | BA |
| 9 | 1.4.2 | Use Case Task Determination |  | 3d | 2010-02-22 | 2010-02-24 | 5 | 2010-02-22 | 2010-02-24 | 3d | 2010-02-22 | 2010-02-24 | BA |
| 10 | 1.4.3 | Use Case Drafts |  | 6d | 2010-02-25 | 2010-03-02 | 8, 9 | 2010-02-25 | 2010-03-02 | 6d | 2010-02-25 | 2010-03-02 | BA; Dev |
| 11 | 1.5 | Architectural Feasibility |  | 6d | 2010-02-23 | 2010-02-28 |  | 2010-02-23 | 2010-02-28 | 6d | 2010-02-23 | 2010-02-28 | Dev; DevMgr; Arch |
| 12 | 1.6 | **Initial Documentation** |  | 21d | 2010-02-22 | 2010-03-14 | 5 | 2010-02-28 | 2010-03-26 | 27d | 2010-02-22 | 2010-03-14 | BA; PrjMgr; Ed |
| 13 | 1.6.1 | Software Design Document Creation |  | 15d | 2010-02-28 | 2010-03-14 |  | 2010-02-28 | 2010-03-04 | 5d | 2010-02-28 | 2010-03-14 | BA; Ed |
| 14 | 1.6.2 | Document Templates Creation |  | 4d | 2010-03-02 | 2010-03-05 |  | 2010-03-02 | 2010-03-05 | 4d | 2010-03-02 | 2010-03-05 | BA; Ed |
| 15 | 1.6.3 | Data Research |  | 21d | 2010-03-06 | 2010-03-26 | 14 | 2010-03-06 | 2010-03-26 | 21d | 2010-03-06 | 2010-03-26 | BA [30%]; Dev [10%]; Ed [30%] |
| 16 | 1.7 | **Technological Familiarization** |  | 31d | 2010-03-07 | 2010-04-06 |  | 2010-03-13 | 2010-04-06 | 25d | 2010-03-07 | 2010-04-06 | DevMgr; Arch |
| 17 | 1.7.1 | Technology Selection |  | 3d | 2010-03-07 | 2010-03-09 |  |  |  |  | 2010-03-07 | 2010-03-09 | PrjMgr; DevMgr; Arch |
| 18 | 1.7.2 | Developer Licensing |  | 7d | 2010-03-07 | 2010-03-13 |  |  |  |  | 2010-03-07 | 2010-03-13 | DevMgr |
| 19 | 1.7.3 | Objective-C Training |  | 25d | 2010-03-13 | 2010-04-06 |  | 2010-03-13 | 2010-04-06 | 25d | 2010-03-13 | 2010-04-06 | Dev; DevMgr; Arch |
| 20 | 1.7.4 | Development Environment Setup |  | 2d | 2010-03-13 | 2010-03-14 |  | 2010-03-13 | 2010-03-14 | 2d | 2010-03-13 | 2010-03-14 | Dev; Arch |
| 21 | 1.8 | Project Codebase Creation |  | 41d | 2010-03-10 | 2010-04-19 |  | 2010-03-10 | 2010-04-19 | 41d | 2010-03-10 | 2010-04-19 | Dev; Arch |
| 22 | 1.9 | Documentation Workflow Finalization | milestone | 0d | 2010-03-20 | 2010-03-20 |  | 2010-03-20 | 2010-03-20 | 30d | 2010-03-20 | 2010-03-20 | BA; Ed |
| 23 | 2 | **Elaboration** |  | 59d | 2010-04-19 | 2010-06-16 | 22 | 2010-03-03 | 2010-06-16 | 106d | 2010-04-19 | 2010-06-16 | BA [25%]; PrjMgr [25%]; DevMgr [10%]; ArtMgr [20%]; Arch [5%] |
| 24 | 2.1 | **Use Case Model Creation** |  | 18d | 2010-03-03 | 2010-03-20 | 10 | 2010-03-03 | 2010-03-17 | 15d | 2010-03-03 | 2010-03-20 | BA; Dev |
| 25 | 2.1.1 | Finalize Document Templates |  | 18d | 2010-03-06 | 2010-03-23 | 14 | 2010-03-06 | 2010-03-23 | 18d | 2010-03-03 | 2010-03-20 | Ed |
| 26 | 2.2 | Elaborate on Software Design Doc |  | 5d | 2010-03-15 | 2010-03-19 | 13 | 2010-04-19 | 2010-04-21 | 3d | 2010-04-19 | 2010-04-23 | Ed; Arch |
| 27 | 2.3 | Software Development Plan Creation |  | 17d | 2010-04-19 | 2010-05-05 |  | 2010-04-19 | 2010-05-05 | 17d | 2010-04-19 | 2010-05-05 | Dev; DevMgr; Arch |

Notes:
- 1: 03/01/2010 / Inception Phase of project lasting throughout first quarter. Familiarization with technology and feasibility. / 03/06/2010 / Expansion of Technological Familiarization to include Technology Selection and Developer Licensing.
- 2: 03/01/2010 / Outline scope of project. Begin Software Design Doc.
- 3: 03/01/2010 / Determine general scope of software and ability to execute.
- 4: 03/01/2010 / Prepare vision statement to prevent scope creep and outline purpose of software.
- 5: 03/05/2010 / Determine software requirements.
- 6: 02/12/2010 / Research market for pre-existing product fulfilling requirements.
- 7: 02/12/2010 / Create set of Use Cases to refine what software should deliver.
- 8: 02/12/2010 / Determine format of Use Cases.
- 9: 02/12/2010 / Determine high-level set of functionality that will be achieved by Use Cases.
- 10: 02/12/2010 / Create initial set of Use Case drafts before template completion.
- 11: 02/25/2010 / Study ability to execute project on platform without any knowledge of platform.
- 12: 2/20/2010 / Create initial set of documentation to support development effort.
- 13: 02/23/2010 / Create Software Design Doc to solidify architectural decisions.
- 14: 02/23/2010 / Determine/Create document template types for business, technical writing and documentation.
- 15: 02/28/2010 / Begin research into system data for User Profile creation.
- 16: 03/01/2010 / Begin process of familiarization with XCode, Objective-C and Apple App Store/Developer resources.
- 17: 03/01/2010 / Begin research into development toolchain (IDE, testing, debugging, prototyping). / 03/06/2010 / Determined need for research into UIWebView vs. CoreGraphics display.
- 18: 03/01/2010 / Realized necessity of testing on actual hardware (performance). Apple Developer license needed for development effort.
- 19: 03/13/2010 / Began Stanford IPhone Developer online course. Intending viewing all course videos and completing each assignment.
- 20: 03/10/2010 / Creation of development environment/workstation. Selection of IDE, placement of workplace, backup/change control procedures.
- 21: 03/08/2010 / Creation of Proof of Concept XCode project.
- 22: 03/01/2010 / Create rough workflow guidelines for project documentation creation.
- 23: 03/01/2010 / Take decisions and templates from Inception phase and complete preparation work for Construction.
- 24: 03/01/2010 / Determine best doctype and template doctype for Use Cases.
- 25: 03/15/2010 / Finalize documentation decisions. Entirety of project documentation created with open source tools. / All documentation - Open Office / All bitmap asset generation - GIMP / All vector asset generation - Inkscape
- 26: 03/03/2010 / Complete structure and rough draft of final Software Design Doc.
- 27: 03/03/2010 / Enhance Software Design Doc section to include specific development decisions.

| ID | WBS | Task | Type | Duration | Start | Finish | Predecessors | Complete | Baseline start | Baseline finish | Baseline duration | Baseline 1 start | Baseline 1 finish | Resources |
| --- | --- | --- | --- | --- | --- | --- | --- | --- | --- | --- | --- | --- | --- | --- |
| 28 | 2.4 | **Finalize Project Environments** |  | 21d | 2010-04-19 | 2010-05-09 |  |  | 2010-04-19 | 2010-05-06 | 18d | 2010-04-19 | 2010-05-09 | Arch |
| 29 | 2.4.1 | Finalize Dev Environment |  | 7d | 2010-04-19 | 2010-04-25 |  |  | 2010-04-19 | 2010-04-25 | 7d | 2010-04-19 | 2010-04-25 | Arch |
| 30 | 2.4.2 | Finalize Art Environment |  | 18d | 2010-04-22 | 2010-05-09 |  |  | 2010-04-19 | 2010-05-06 | 18d | 2010-04-22 | 2010-05-09 | Art; Arch |
| 31 | 2.4.3 | Finalize Test Environment |  | 17d | 2010-04-23 | 2010-05-09 |  |  | 2010-04-19 | 2010-05-05 | 17d | 2010-04-23 | 2010-05-09 | QA; Arch |
| 32 | 2.5 | **Create Software Development Model** |  | 31d | 2010-05-06 | 2010-06-05 | 27 |  | 2010-05-06 | 2010-06-05 | 31d | 2010-05-06 | 2010-06-05 | Dev; DevMgr; Arch |
| 33 | 2.5.1 | Technology Research |  | 31d | 2010-05-06 | 2010-06-05 |  |  | 2010-05-06 | 2010-06-05 | 31d | 2010-05-06 | 2010-06-05 | Dev; Arch |
| 34 | 2.5.2 | Data Research |  | 31d | 2010-05-06 | 2010-06-05 |  |  | 2010-05-06 | 2010-06-05 | 31d | 2010-05-06 | 2010-06-05 | Dev |
| 35 | 2.5.3 | Class Model |  | 18d | 2010-05-06 | 2010-05-23 |  |  | 2010-05-06 | 2010-06-04 | 30d | 2010-05-06 | 2010-05-23 | Arch |
| 36 | 2.5.4 | ER Model |  | 14d | 2010-05-06 | 2010-05-19 |  |  | 2010-05-06 | 2010-05-19 | 14d | 2010-05-06 | 2010-05-19 | Arch |
| 37 | 2.6 | **Visual Design Finalization** |  | 22d | 2010-04-29 | 2010-05-20 |  | 2% | 2010-04-29 | 2010-05-20 | 22d | 2010-04-29 | 2010-05-20 | Art; ArtMgr |
| 38 | 2.6.1 | Finalize Art Workflow |  | 22d | 2010-04-29 | 2010-05-20 |  |  | 2010-04-29 | 2010-05-20 | 22d | 2010-04-29 | 2010-05-20 | Art; Arch |
| 39 | 2.6.2 | Finalize Initial Art Assets |  | 9d | 2010-04-29 | 2010-05-07 |  | 10% | 2010-04-29 | 2010-05-07 | 9d | 2010-04-29 | 2010-05-07 | Art |
| 40 | 2.7 | Proof of Concept |  | 15d | 2010-05-03 | 2010-05-17 |  |  | 2010-05-03 | 2010-05-17 | 15d | 2010-05-03 | 2010-05-17 | PrjMgr; DevMgr; ArtMgr; Arch |
| 41 | 2.8 | Functional Prototype | milestone | 0d | 2010-05-18 | 2010-05-18 | 40 |  | 2010-05-18 | 2010-05-18 | 30d | 2010-05-18 | 2010-05-18 | Dev; DevMgr; Arch |
| 42 | 3 | **Construction** |  | 99d | 2010-06-06 | 2010-09-12 |  |  | 2010-06-06 | 2010-09-12 | 99d | 2010-06-06 | 2010-09-12 | PrjMgr; DevMgr |
| 43 | 3.1 | **Primary Development** |  | 82d | 2010-06-06 | 2010-08-26 | 32 |  | 2010-06-06 | 2010-09-04 | 91d | 2010-06-06 | 2010-08-26 | Dev; DevMgr; Arch |
| 44 | 3.1.1 | Interface Development |  | 82d | 2010-06-06 | 2010-08-26 |  |  | 2010-06-15 | 2010-09-04 | 82d | 2010-06-06 | 2010-08-26 | Art; Dev |
| 45 | 3.1.2 | Class Development |  | 75d | 2010-06-06 | 2010-08-19 |  |  | 2010-06-06 | 2010-08-19 | 75d | 2010-06-06 | 2010-08-19 | Dev |
| 46 | 3.1.3 | Data Development |  | 60d | 2010-06-06 | 2010-08-04 |  |  | 2010-06-27 | 2010-08-25 | 60d | 2010-06-06 | 2010-08-04 | Dev |
| 47 | 3.1.4 | Performance Development |  | 32d | 2010-06-25 | 2010-07-26 |  |  | 2010-07-07 | 2010-08-07 | 32d | 2010-06-25 | 2010-07-26 |  |
| 48 | 3.2 | **Quality Assuarance** |  | 15d | 2010-07-15 | 2010-07-29 |  |  | 2010-07-15 | 2010-07-29 | 15d | 2010-07-15 | 2010-07-29 | QAMgr; QA |
| 49 | 3.2.1 | Final Usability |  | 15d | 2010-07-15 | 2010-07-29 |  |  | 2010-07-15 | 2010-07-29 | 15d | 2010-07-15 | 2010-07-29 | BA; Con |
| 50 | 3.3 | User Documentation |  | 17d | 2010-07-30 | 2010-08-15 |  |  | 2010-07-30 | 2010-08-15 | 17d | 2010-07-30 | 2010-08-15 | PrjMgr; QAMgr |
| 51 | 3.4 | **Alpha Release** |  | 16d | 2010-08-01 | 2010-08-16 |  |  | 2010-08-01 | 2010-08-16 | 16d | 2010-08-01 | 2010-08-16 | Dev; PrjMgr; DevMgr; Arch |
| 52 | 3.4.1 | Alpha QA Iteration |  | 16d | 2010-08-01 | 2010-08-16 |  |  | 2010-08-01 | 2010-08-16 | 16d | 2010-08-01 | 2010-08-16 | Dev; QAMgr; QA |

Notes:
- 28: 03/10/2010 / Finalize development workspace including filesystem naming conventions, backup procedures and workflow facilitation.
- 29: 03/01/2010 / Complete creation of POC XCode project with general build targets, Unit Testing and project structure.
- 30: 03/03/2010 / Finalized filesystem conventions and tool settings/preferences. / Raster - GIMP workspace, high resolution photography, high resolution assets stored, exported to low resolution iPhone assets. / Vector - Inkscape workspace, exported to low resolution iPhone assets. / Familiarization with Inkscape-specific svg file format.
- 31: 03/10/2010 / Setup of SenTestingKit with default Unit Tests included in build process.
- 32: 03/02/2010 / Design the principle software systems of the project.
- 33: 03/02/2010 / Determine best practices and most efficient frameworks for use on Apple Devices.
- 34: 03/01/2010 / Continuing research into software content and User customization.
- 35: 03/01/2010 / Construct Class Model diagram for high-level relationship determinations.
- 36: 03/01/2010 / Create entity-relationship diagram for datastructures to hold both System data and User data.
- 37: 03/07/2010 / Finalize design metaphor and visual direction of project.
- 38: 03/09/2010 / Determine best-practices in Art development environment and workflow.
- 39: 03/08/2010 / Create first batch of prototype art assets for Proof of Concept.
- 40: 03/03/2010 / Create Proof of Concept iPhone app proving out ability to create application and test initial screen layouts and design decisions.
- 41: 03/01/2010 / Create functional Prototype for usability testing based upon Proof of Concept.
- 42: 02/01/2010 / Take assets/code generated in elaboration and build functional product.
- 43: 03/08/2010 / Primary class development
- 44: 03/09/2010 / Designing and implementing User feedback. Implementing visual design metaphor.
- 45: 03/03/2010 / Primary development of codebase.
- 46: 03/10/2010 / Primary development of data structures
- 47: 03/10/2010 / Troubleshooting, leak management, performance improvement.
- 48: 03/01/2010 / Finalization of testing before alpha release.
- 49: 03/03/2010 / Review of usability study and last iteration.
- 50: 03/12/2010 / Creation of User documentation. Leverage Use Cases.
- 51: 03/12/2010 / Alpha release to testers.
- 52: 03/12/2010 / Iteration of Alpha test back to testers.

| ID | WBS | Task | Type | Duration | Start | Finish | Predecessors | Baseline start | Baseline finish | Baseline duration | Baseline 1 start | Baseline 1 finish | Resources |
| --- | --- | --- | --- | --- | --- | --- | --- | --- | --- | --- | --- | --- | --- |
| 53 | 3.5 | **Beta Release** |  | 14d | 2010-08-17 | 2010-08-30 | 51 | 2010-08-17 | 2010-08-30 | 14d | 2010-08-17 | 2010-08-30 | Dev; PrjMgr; DevMgr; Arch |
| 54 | 3.5.1 | Beta QA Iteration |  | 14d | 2010-08-17 | 2010-08-30 |  | 2010-08-17 | 2010-08-30 | 14d | 2010-08-17 | 2010-08-30 | Dev; QAMgr; QA |
| 55 | 3.6 | Release Candidate | milestone | 0d | 2010-08-31 | 2010-08-31 | 53 | 2010-08-31 | 2010-08-31 | 13d | 2010-08-31 | 2010-08-31 | Dev; PrjMgr; DevMgr; QAMgr; QA; Arch |
| 56 | 4 | **Transition** |  | 64d | 2010-08-26 | 2010-10-28 |  | 2010-08-26 | 2011-10-28 | 429d | 2010-08-26 | 2010-10-28 | MktMgr; PrjMgr |
| 57 | 4.1 | **Public Infrastructure Creation** |  | 31d | 2010-08-26 | 2010-09-25 |  | 2010-08-26 | 2010-09-25 | 31d | 2010-08-26 | 2010-09-25 | MktMgr; Art; Dev; PrjMgr; DevMgr; Ed |
| 58 | 4.1.1 | Site Visual Design |  | 31d | 2010-08-26 | 2010-09-25 |  | 2010-08-26 | 2010-09-25 | 31d | 2010-08-26 | 2010-09-25 | BA; Art; ArtMgr; Ed |
| 59 | 4.1.2 | Site SEO |  | 6d | 2010-08-26 | 2010-08-31 |  | 2010-08-26 | 2010-08-31 | 6d | 2010-08-26 | 2010-08-31 | MktMgr; Ed |
| 60 | 4.1.3 | Site Development |  | 12d | 2010-09-01 | 2010-09-12 |  | 2010-09-01 | 2010-09-12 | 12d | 2010-09-01 | 2010-09-12 | Art; Dev; DevMgr |
| 61 | 4.1.4 | Site Promotion |  | 5d | 2010-09-13 | 2010-09-17 | 60 | 2010-09-13 | 2010-09-17 | 5d | 2010-09-13 | 2010-09-17 | Dev; Arch |
| 62 | 4.2 | **Application Promotion** |  | 25d | 2010-09-13 | 2010-10-07 |  | 2010-09-13 | 2010-10-07 | 25d | 2010-09-13 | 2010-10-07 | PrjMgr; DevMgr; Arch |
| 63 | 4.2.1 | Application Submission |  | 18d | 2010-09-13 | 2010-09-30 | 55 | 2010-09-13 | 2010-09-30 | 18d | 2010-09-13 | 2010-09-30 | Arch |
| 64 | 4.2.2 | Rejection Preparation |  | 18d | 2010-09-20 | 2010-10-07 |  | 2010-09-20 | 2010-10-07 | 18d | 2010-09-20 | 2010-10-07 | Dev |
| 65 | 4.3 | Licensing and Copyright |  | 29d | 2010-09-30 | 2010-10-28 |  | 2011-09-30 | 2011-10-28 | 29d | 2010-09-30 | 2010-10-28 | BA; Ed |
| 66 | 4.4 | Press Release |  | 11d | 2010-10-01 | 2010-10-11 |  | 2010-10-01 | 2010-10-01 | 1d | 2010-10-01 | 2010-10-11 |  |

Notes:
- 53: 03/03/2010 / Beta release to testers.
- 55: 03/03/2010 / Complete changes from Beta release. Release to larger testing audience.
- 56: 03/01/2010 / Rough outline of Transition tasks. Further elaboration upon reaching Construction Phase.
- 57: 03/12/2010 / Establish public hosting, DNS, technology vendors for public site.
- 58: 03/12/2010 / Leverage project visual design assets into web assets.
- 59: 03/12/2010 / Optimize site for aggregation on various public and social sites.
- 60: 03/12/2010 / Develop site framework and pages.
- 61: 03/12/2010 / Promote site.
- 62: 03/12/2010 / Finalize application and submit for approval.
- 63: 03/12/2010 / Prepare project for submission to iTunes Connect.
- 64: 03/12/2010 / Prepare for application rejection. Document code, eliminate bugs/leaks.
- 65: 03/12/2010 / Submit product logos, procedures and project for licensing, copyright and patenting.
- 66: 03/12/2010 / Write press release for publishing on public/social sites.
