# One Person Software Development Project

Schedule from GanttProject, 2010-01-21 to 2010-10-28, baseline: InitialDraft.
Team Axe, LLC
This is the project plan of the first software creation from Team Axe, LLC. / The project itself will follow the OpenUP software development process, and as such is divided into four phases: Inception, Elaboration, Construction and Transition. The purpose of the project is to create a compelling and well-developed software creation utilizing the resources of only a single developer. / Quarterly progress reports and other information can be viewed at the URL supplied with this document.

## Calendars

- Project calendar: Mon-Sun working.

## Resources

| Resource | Group |
| --- | --- |
| PrjMgr | Project Manager |
| DevMgr | Development Manager |
| ArtMgr | Graphic Design Manager |
| QAMgr | Quality Assurance Manager |
| MktMgr | Marketing Manager |
| Dev | Developer |
| Arch | Architect |
| Art | Graphic Designer |
| QA | Quality Assurance Tester |
| Ed | Editor |
| BA | Business Analyst |
| Con | External Consultant |
| Audio | Audio Engineer |

## Schedule

| ID | WBS | Task | Type | Duration | Start | Finish | Predecessors | Complete | Baseline start | Baseline finish | Baseline duration | Baseline 1 start | Baseline 1 finish | Resources |
| --- | --- | --- | --- | --- | --- | --- | --- | --- | --- | --- | --- | --- | --- | --- |
| 1 | 1 | **Inception** |  | 90d | 2010-01-21 | 2010-04-20 |  | 92% | 2010-01-21 | 2010-04-19 | 89d | 2010-01-21 | 2010-04-19 | PrjMgr [50%]; BA [50%] |
| 2 | 1.1 | **Project Definition** |  | 13d | 2010-01-21 | 2010-02-02 |  | 100% | 2010-01-21 | 2010-02-02 | 13d | 2010-01-21 | 2010-02-02 | PrjMgr [25%]; BA [10%] |
| 3 | 1.1.1 | Project Scope Determination |  | 1d | 2010-01-21 | 2010-01-21 |  | 100% | 2010-01-21 | 2010-01-21 | 1d | 2010-01-21 | 2010-01-21 | ArtMgr [20%]; QAMgr [10%]; PrjMgr [50%]; BA [50%]; DevMgr [25%]; MktMgr [10%] |
| 4 | 1.1.2 | Vision Statement |  | 2d | 2010-02-01 | 2010-02-02 | 3 | 100% | 2010-02-01 | 2010-02-02 | 2d | 2010-02-01 | 2010-02-02 | PrjMgr; BA; DevMgr; MktMgr |
| 5 | 1.2 | Initial Requirements |  | 12d | 2010-02-10 | 2010-02-21 |  | 100% | 2010-02-10 | 2010-02-21 | 12d | 2010-02-10 | 2010-02-21 | BA |
| 6 | 1.3 | Market Research |  | 5d | 2010-02-12 | 2010-02-16 |  | 100% |  |  |  | 2010-02-12 | 2010-02-16 | PrjMgr |
| 7 | 1.4 | **Use Case Creation** |  | 19d | 2010-02-12 | 2010-03-02 |  | 100% | 2010-02-12 | 2010-03-02 | 19d | 2010-02-12 | 2010-03-02 | PrjMgr; BA |
| 8 | 1.4.1 | Use Case Template Creation |  | 12d | 2010-02-12 | 2010-02-23 |  | 100% | 2010-02-12 | 2010-02-12 | 1d | 2010-02-12 | 2010-02-12 | BA |
| 9 | 1.4.2 | Use Case Task Determination |  | 3d | 2010-02-22 | 2010-02-24 | 5 | 100% | 2010-02-22 | 2010-02-24 | 3d | 2010-02-22 | 2010-02-24 | BA |
| 10 | 1.4.3 | Use Case Drafts |  | 6d | 2010-02-25 | 2010-03-02 | 8, 9 | 100% | 2010-02-25 | 2010-03-02 | 6d | 2010-02-25 | 2010-03-02 | Dev; BA |
| 11 | 1.5 | Architectural Feasibility |  | 6d | 2010-02-23 | 2010-02-28 |  | 100% | 2010-02-23 | 2010-02-28 | 6d | 2010-02-23 | 2010-02-28 | Dev; Arch; DevMgr |
| 12 | 1.6 | **Initial Documentation** |  | 33d | 2010-02-22 | 2010-03-26 | 5 | 100% | 2010-02-28 | 2010-03-26 | 27d | 2010-02-22 | 2010-03-14 | PrjMgr; BA; Ed |
| 13 | 1.6.1 | Software Design Document Creation |  | 15d | 2010-02-22 | 2010-03-08 |  | 100% | 2010-02-28 | 2010-03-04 | 5d | 2010-02-28 | 2010-03-14 | BA; Ed |
| 14 | 1.6.2 | Document Templates Creation |  | 4d | 2010-03-02 | 2010-03-05 |  | 100% | 2010-03-02 | 2010-03-05 | 4d | 2010-03-02 | 2010-03-05 | BA; Ed |
| 15 | 1.6.3 | Data Research |  | 21d | 2010-03-06 | 2010-03-26 | 14 | 100% | 2010-03-06 | 2010-03-26 | 21d | 2010-03-06 | 2010-03-26 | Dev [10%]; BA [30%]; Ed [30%] |
| 16 | 1.7 | **Technological Familiarization** |  | 45d | 2010-03-07 | 2010-04-20 |  | 100% | 2010-03-13 | 2010-04-06 | 25d | 2010-03-07 | 2010-04-06 | Arch; DevMgr |
| 17 | 1.7.1 | Technology Selection |  | 3d | 2010-03-07 | 2010-03-09 |  | 100% |  |  |  | 2010-03-07 | 2010-03-09 | Arch; PrjMgr; DevMgr |
| 18 | 1.7.2 | Developer Licensing |  | 7d | 2010-03-07 | 2010-03-13 |  | 100% |  |  |  | 2010-03-07 | 2010-03-13 | DevMgr |
| 19 | 1.7.3 | Objective-C Training |  | 39d | 2010-03-13 | 2010-04-20 |  | 100% | 2010-03-13 | 2010-04-06 | 25d | 2010-03-13 | 2010-04-06 | Dev; Arch; DevMgr |
| 20 | 1.7.4 | Development Environment Setup |  | 12d | 2010-03-13 | 2010-03-24 |  | 100% | 2010-03-13 | 2010-03-14 | 2d | 2010-03-13 | 2010-03-14 | Dev; Arch |
| 21 | 1.7.5 | Toolchain |  | 25d | 2010-03-13 | 2010-04-06 |  | 100% |  |  |  |  |  | Arch |
| 22 | 1.8 | Project Codebase Creation |  | 41d | 2010-03-10 | 2010-04-19 |  | 100% | 2010-03-10 | 2010-04-19 | 41d | 2010-03-10 | 2010-04-19 | Dev; Arch |
| 23 | 1.9 | **Initial Visual Design** |  | 37d | 2010-03-12 | 2010-04-17 |  | 100% |  |  |  |  |  | ArtMgr; Art |
| 24 | 1.9.1 | Determine Design Metaphor |  | 18d | 2010-03-12 | 2010-03-29 |  | 100% |  |  |  |  |  | ArtMgr; Arch; Art |
| 25 | 1.9.2 | Visual Assets Prototypes |  | 29d | 2010-03-20 | 2010-04-17 |  | 100% |  |  |  |  |  | Art |
| 26 | 1.10 | Project Timeline |  | 6d | 2010-03-20 | 2010-03-25 |  | 100% |  |  |  |  |  | PrjMgr |
| 27 | 1.11 | Documentation Workflow Finalization | milestone | 0d | 2010-03-20 | 2010-03-20 |  | 40% | 2010-03-20 | 2010-03-20 | 30d | 2010-03-20 | 2010-03-20 | BA; Ed |

Notes:
- 1: 03/01/2010 / Inception Phase of project lasting throughout first quarter. Familiarization with technology and feasibility. / 03/06/2010 / Expansion of Technological Familiarization to include Technology Selection and Developer Licensing. / 03/12/2010 / Creation of Initial Visual Design task. Added metaphor and process tasks. Added Project Timeline Task. / 04/19/2010 / Most Inception tasks complete. Objective-C training going more slowly than anticipated. In response, Objective-C training task added to all phases of project.
- 2: 03/01/2010 / Outline scope of project. Begin Software Design Doc.
- 3: 03/01/2010 / Determine general scope of software and ability to execute. / 03/12/2010 / Determined limited platform choice of only iPhone production. / 04/19/2010 / Further limitations in platform choice. No native iPad support in first release. iOS 3 and above support given to difficulty in aquiring iOS 2 hardware.
- 4: 03/01/2010 / Prepare vision statement to prevent scope creep and outline purpose of software. / 03/12/2010 / Vision statement developed to focus development effort.
- 5: 03/05/2010 / Determine software requirements. / 03/12/2010 / Determined application limited to 4 screens at maximum in order to focus development effort on 4 discrete functionalities.
- 6: 02/12/2010 / Research market for pre-existing product fulfilling requirements. / 03/12/2010 / Conducted extensive market research. No product in Apple Marketplace or overall software market that meets Use Cases. / 04/19/2010 / Continued research shows no compelling social networking component either.
- 7: 02/12/2010 / Create set of Use Cases to refine what software should deliver.
- 8: 02/12/2010 / Determine format of Use Cases. / 03/12/2010 / Format and template of Use Cases created. Creation took longer than expected. End date increased by 2 weeks.
- 9: 02/12/2010 / Determine high-level set of functionality that will be achieved by Use Cases. / 03/12/2010 / Final set of product functionality set. Use Cases written to reflect this.
- 10: 02/12/2010 / Create initial set of Use Case drafts before template completion. / 03/12/2010 / Use Cases of 4 primary functionality drafts completed. One feature under consideration for removal. / 04/19/2010 / Use Cases reduced to 3 primary functionality paths.
- 11: 02/25/2010 / Study ability to execute project on platform without any knowledge of platform. / 03/12/2010 / Developer background with C/C++ makes Objective C acclimation possible. Project feasibility granted.
- 12: 2/20/2010 / Create initial set of documentation to support development effort.
- 13: 02/23/2010 / Create Software Design Doc to solidify architectural decisions. / 03/12/2010 / Software Design Document framework completed with all sections drafted. / 03/30/2010 / Final Draft of Design doc completed. Each section will be added to as development continues. As such, Software Design Doc update task added to each phase.
- 14: 02/23/2010 / Determine/Create document template types for business, technical writing and documentation. / 03/12/2010 / Document templates for all project documentation determined. Open Office chosen as exclusive tool.
- 15: 02/28/2010 / Begin research into system data for User Profile creation. / 03/12/2010 / Product reference material and data research determined to be greater than Inception phase endeavor. Will progress throughout Elaboration and Construction. / 04/09/2010 / Initial Data collection and archival completed.
- 16: 03/01/2010 / Begin process of familiarization with XCode, Objective-C and Apple App Store/Developer resources.
- 17: 03/01/2010 / Begin research into development toolchain (IDE, testing, debugging, prototyping). / 03/06/2010 / Determine scope of project to include platforms outside iPhone OS. / 03/12/2010 / Determined need for research into UIWebView vs. CoreGraphics display.
- 18: 03/01/2010 / Realized necessity of testing on actual hardware (performance). Apple Developer license needed for development effort. / 03/12/2010 / Applying for Apple Developer Program. / 04/08/2010 / Acceptance to Apple Developer Program.
- 19: 03/10/2010 / Began Stanford IPhone Developer online course. Intending viewing all course videos and completing each assignment. / 03/12/2010 / Underestimated time. Goal extended 2 weeks. / 04/04/2010 / Need for ongoing training identified. Entry level Apple tutorials/documentation finished. / 04/09/2010 / Research into Apple documentation/education complete.
- 20: 03/10/2010 / Creation of development environment/workstation. Selection of IDE, placement of workplace, backup/change control procedures. / 03/12/2010 / Project setup completion. Test Unit Tests created. Need testable use cases. / 04/08/2010 / Apple certificates/provisioning profiles received. Test devices provisioned.
- 21: 03/03/2010 / Finalize procedures and workflows in generating content for development/archival. / 03/12/2010 / Toolchain finalized.
- 22: 03/08/2010 / Creation of Proof of Concept XCode project. / 03/12/2010 / Project filesystem hierarchy established. Navigation hierarchy completed. / 04/08/2010 / Project codebase successfully tested on actual devices.
- 24: 03/12/2010 / Determine guiding design metaphor for UI. / 04/04/2010 / Visual design metaphor for UI identified and tested. Design for major project deliverable still undergoing revision. / 04/09/2010 / Major project deliverable initial visual design finalized.
- 25: 03/12/2010 / Determine ability to generate art assets in acceptable timeframes. / 04/08/2010 / Prototype visual assets exported and pushed to test devices.
- 26: 03/12/2010 / Develop Gantt Chart. For project. Utilize Open Office Calc public domain Gantt Chart Template. / 04/01/2010 / Gantt Chart first revision complete. Inception Phase complete.
- 27: 03/01/2010 / Create rough workflow guidelines for project documentation creation. / 3/12/2010 / Project documentation types determined. Software Design Doc, Vision Doc, System/User Data Model Doc, UI Model Doc, Assest Licensing Doc, Use Cases.

| ID | WBS | Task | Type | Duration | Start | Finish | Predecessors | Complete | Baseline start | Baseline finish | Baseline duration | Baseline 1 start | Baseline 1 finish | Resources |
| --- | --- | --- | --- | --- | --- | --- | --- | --- | --- | --- | --- | --- | --- | --- |
| 28 | 2 | **Elaboration** |  | 106d | 2010-03-03 | 2010-06-16 |  | 36% | 2010-03-03 | 2010-06-16 | 106d | 2010-04-19 | 2010-06-16 | ArtMgr [20%]; Arch [5%]; PrjMgr [25%]; BA [25%]; DevMgr [10%] |
| 29 | 2.1 | Use Case Model Creation |  | 49d | 2010-03-03 | 2010-04-20 | 10 | 75% | 2010-03-03 | 2010-03-17 | 15d | 2010-03-03 | 2010-03-20 | Dev; BA |
| 30 | 2.2 | **Ongoing Training and Documentation** |  | 106d | 2010-03-03 | 2010-06-16 |  | 25% |  |  |  |  |  |  |
| 31 | 2.2.1 | Objective C training - Stanford Class |  | 106d | 2010-03-03 | 2010-06-16 |  | 25% |  |  |  |  |  |  |
| 32 | 2.2.2 | Software Design Doc revisions |  | 32d | 2010-05-05 | 2010-06-05 |  | 25% |  |  |  |  |  | DevMgr |
| 33 | 2.3 | Finalize Document Templates |  | 49d | 2010-03-06 | 2010-04-23 | 14 | 60% | 2010-03-06 | 2010-03-23 | 18d | 2010-03-03 | 2010-03-20 | Ed |
| 34 | 2.4 | **Initial Usability** |  | 37d | 2010-04-01 | 2010-05-07 |  | 50% |  |  |  |  |  | QAMgr; Con |
| 35 | 2.4.1 | Aquire Usability Resource |  | 37d | 2010-04-01 | 2010-05-07 |  | 50% |  |  |  |  |  | QAMgr |
| 36 | 2.5 | Software Development Plan Creation |  | 17d | 2010-04-19 | 2010-05-05 |  | 30% | 2010-04-19 | 2010-05-05 | 17d | 2010-04-19 | 2010-05-05 | Dev; Arch; DevMgr |
| 37 | 2.6 | **Finalize Project Environments** |  | 21d | 2010-04-19 | 2010-05-09 |  | 33% | 2010-04-19 | 2010-05-06 | 18d | 2010-04-19 | 2010-05-09 | Arch |
| 38 | 2.6.1 | Finalize Dev Environment |  | 7d | 2010-04-19 | 2010-04-25 |  | 50% | 2010-04-19 | 2010-04-25 | 7d | 2010-04-19 | 2010-04-25 | Arch |
| 39 | 2.6.2 | Finalize Art Environment |  | 18d | 2010-04-22 | 2010-05-09 |  | 45% | 2010-04-19 | 2010-05-06 | 18d | 2010-04-22 | 2010-05-09 | Arch; Art |
| 40 | 2.6.3 | Finalize Test Environment |  | 17d | 2010-04-23 | 2010-05-09 |  | 15% | 2010-04-19 | 2010-05-05 | 17d | 2010-04-23 | 2010-05-09 | Arch; QA |
| 41 | 2.7 | **Visual Design Finalization** |  | 22d | 2010-04-29 | 2010-05-20 |  | 17% | 2010-04-29 | 2010-05-20 | 22d | 2010-04-29 | 2010-05-20 | ArtMgr; Art |
| 42 | 2.7.1 | Finalize Art Workflow |  | 22d | 2010-04-29 | 2010-05-20 |  | 20% | 2010-04-29 | 2010-05-20 | 22d | 2010-04-29 | 2010-05-20 | Arch; Art |
| 43 | 2.7.2 | Finalize Initial Art Assets |  | 9d | 2010-04-29 | 2010-05-07 |  | 10% | 2010-04-29 | 2010-05-07 | 9d | 2010-04-29 | 2010-05-07 | Art |
| 44 | 2.8 | Proof of Concept |  | 15d | 2010-05-03 | 2010-05-17 |  | 25% | 2010-05-03 | 2010-05-17 | 15d | 2010-05-03 | 2010-05-17 | ArtMgr; Arch; PrjMgr; DevMgr |
| 45 | 2.9 | **Create Software Development Model** |  | 31d | 2010-05-06 | 2010-06-05 | 36 | 23% | 2010-05-06 | 2010-06-05 | 31d | 2010-05-06 | 2010-06-05 | Dev; Arch; DevMgr |
| 46 | 2.9.1 | Technology Research |  | 31d | 2010-05-06 | 2010-06-05 |  | 30% | 2010-05-06 | 2010-06-05 | 31d | 2010-05-06 | 2010-06-05 | Dev; Arch |
| 47 | 2.9.2 | Data Research |  | 31d | 2010-05-06 | 2010-06-05 |  | 25% | 2010-05-06 | 2010-06-05 | 31d | 2010-05-06 | 2010-06-05 | Dev |
| 48 | 2.9.3 | Class Model |  | 18d | 2010-05-06 | 2010-05-23 |  | 15% | 2010-05-06 | 2010-06-04 | 30d | 2010-05-06 | 2010-05-23 | Arch |
| 49 | 2.9.4 | ER Model |  | 14d | 2010-05-06 | 2010-05-19 |  | 15% | 2010-05-06 | 2010-05-19 | 14d | 2010-05-06 | 2010-05-19 | Arch |
| 50 | 2.10 | Functional Prototype | milestone | 0d | 2010-05-18 | 2010-05-18 | 44 |  | 2010-05-18 | 2010-05-18 | 30d | 2010-05-18 | 2010-05-18 | Dev; Arch; DevMgr |
| 51 | 3 | **Construction** |  | 109d | 2010-05-27 | 2010-09-12 |  | 4% | 2010-06-06 | 2010-09-12 | 99d | 2010-06-06 | 2010-09-12 | PrjMgr; DevMgr |
| 52 | 3.1 | **Visual Design Finalization** |  | 93d | 2010-05-27 | 2010-08-27 |  | 8% |  |  |  |  |  | ArtMgr |
| 53 | 3.1.1 | Interface Asset Generation |  | 93d | 2010-05-27 | 2010-08-27 |  | 10% |  |  |  |  |  | Art |
| 54 | 3.1.2 | Project Asset Generation |  | 62d | 2010-06-05 | 2010-08-05 |  | 5% |  |  |  |  |  |  |

Notes:
- 28: 03/01/2010 / Take decisions and templates from Inception phase and complete preparation work for Construction. / 03/12/2010 / Realized need for Usability expertise. Added task. / 04/08/2010 / Ongoing Training and Documentation tasks added.
- 29: 03/01/2010 / Determine best doctype and template doctype for Use Cases. / 04/08/2010 / 3 Primary Use Case scenarios developed. System setup Use Case need identified. / 04/09/2010 / System setup Use Case developed.
- 31: 04/08/2010 / Taking Stanford Online Classes. 1st set of assignments complete.
- 32: 03/03/2010 / Complete structure and rough draft of final Software Design Doc. / 03/12/2010 / Sections finalized. / 04/08/2010 / Task moved under Ongoing Training and documentation.
- 33: 03/12/2010 / Finalize documentation decisions. Entirety of project documentation created with open source tools. / All documentation - Open Office / All bitmap asset generation - GIMP / All vector asset generation - Inkscape / 04/08/2010 / SVG workflow/structure identified for parsing. Art workflow now seemless to code consumption.
- 34: 03/30/2010 / Usability Expert consulted. Will contract initial Usability study to external resource.
- 35: 03/30/2010 / Gathering Use Cases and Software Design Doc for review by Usability Expert. / 04/09/2010 / NDA sent to Usability Expert.
- 36: 03/03/2010 / Enhance Software Design Doc section to include specific development decisions.
- 37: 03/10/2010 / Finalize development workspace including filesystem naming conventions, backup procedures and workflow facilitation.
- 38: 03/01/2010 / Complete creation of POC XCode project with general build targets, Unit Testing and project structure. / 03/12/2010 / Completed build targets, comment syntax, doxygen support.
- 39: 03/03/2010 / Finalized filesystem conventions and tool settings/preferences. / Raster - GIMP workspace, high resolution photography, high resolution assets stored, exported to low resolution iPhone assets. / Vector - Inkscape workspace, exported to low resolution iPhone assets. / Familiarization with Inkscape-specific svg file format. / 04/08/2010 / Codebase partitioned to accept art assests direct from Art workflow.
- 40: 03/10/2010 / Setup of SenTestingKit with default Unit Tests included in build process. / 04/08/2010 / SenTesting initial test cases created and merged with Build Process.
- 41: 03/07/2010 / Finalize design metaphor and visual direction of project.
- 42: 03/09/2010 / Determine best-practices in Art development environment and workflow.
- 43: 03/08/2010 / Create first batch of prototype art assets for Proof of Concept.
- 44: 03/03/2010 / Create Proof of Concept iPhone app proving out ability to create application and test initial screen layouts and design decisions.
- 45: 03/02/2010 / Design the principle software systems of the project. / 04/08/2010 / Methods for generating Data/ER/Class models determined.
- 46: 03/02/2010 / Determine best practices and most efficient frameworks for use on Apple Devices. / 04/08/2010 / Apple HIG, Best practices and Programming guides reviewed.
- 47: 03/01/2010 / Continuing research into software content and User customization. / 04/08/2010 / Core Data chosen as Model Framework over custom SQLite implementation.
- 48: 03/01/2010 / Construct Class Model diagram for high-level relationship determinations. / 04/08/2010 / Initial Class implementations from ER/Model work initiated.
- 49: 03/01/2010 / Create entity-relationship diagram for datastructures to hold both System data and User data. / 04/08/2010 / Basic Visual models generated via Eclipse-based ER software. CoreData model will be generated via XCode.
- 50: 03/01/2010 / Create functional Prototype for usability testing based upon Proof of Concept.
- 51: 02/01/2010 / Take assets/code generated in elaboration and build functional product. / 03/12/2010 / Added Visual design development/generation path.
- 53: 04/08/2010 / Photography completed. Asset generation (lighting, croping, resizing) commencing.
- 54: 04/08/2010 / Asset prototypes constructed. Performance issues noticed.

| ID | WBS | Task | Type | Duration | Start | Finish | Predecessors | Complete | Baseline start | Baseline finish | Baseline duration | Baseline 1 start | Baseline 1 finish | Resources |
| --- | --- | --- | --- | --- | --- | --- | --- | --- | --- | --- | --- | --- | --- | --- |
| 55 | 3.2 | **Primary Development** |  | 82d | 2010-06-06 | 2010-08-26 | 45 | 4% | 2010-06-06 | 2010-09-04 | 91d | 2010-06-06 | 2010-08-26 | Dev; Arch; DevMgr |
| 56 | 3.2.1 | Interface Development |  | 82d | 2010-06-06 | 2010-08-26 |  | 5% | 2010-06-15 | 2010-09-04 | 82d | 2010-06-06 | 2010-08-26 | Dev; Art |
| 57 | 3.2.2 | Class Development |  | 75d | 2010-06-06 | 2010-08-19 |  | 5% | 2010-06-06 | 2010-08-19 | 75d | 2010-06-06 | 2010-08-19 | Dev |
| 58 | 3.2.3 | Data Development |  | 60d | 2010-06-06 | 2010-08-04 |  | 5% | 2010-06-27 | 2010-08-25 | 60d | 2010-06-06 | 2010-08-04 | Dev |
| 59 | 3.2.4 | Performance Development |  | 32d | 2010-06-25 | 2010-07-26 |  | 2% | 2010-07-07 | 2010-08-07 | 32d | 2010-06-25 | 2010-07-26 |  |
| 60 | 3.3 | **Quality Assuarance** |  | 15d | 2010-07-15 | 2010-07-29 |  |  | 2010-07-15 | 2010-07-29 | 15d | 2010-07-15 | 2010-07-29 | QA; QAMgr |
| 61 | 3.3.1 | Final Usability |  | 15d | 2010-07-15 | 2010-07-29 |  |  | 2010-07-15 | 2010-07-29 | 15d | 2010-07-15 | 2010-07-29 | BA; Con |
| 62 | 3.4 | User Documentation |  | 17d | 2010-07-30 | 2010-08-15 |  |  | 2010-07-30 | 2010-08-15 | 17d | 2010-07-30 | 2010-08-15 | QAMgr; PrjMgr |
| 63 | 3.5 | **Alpha Release** |  | 16d | 2010-08-01 | 2010-08-16 |  |  | 2010-08-01 | 2010-08-16 | 16d | 2010-08-01 | 2010-08-16 | Dev; Arch; DevMgr |
| 64 | 3.5.1 | Alpha QA Iteration |  | 16d | 2010-08-01 | 2010-08-16 |  |  | 2010-08-01 | 2010-08-16 | 16d | 2010-08-01 | 2010-08-16 | Dev; QA; QAMgr |
| 65 | 3.6 | **Beta Release** |  | 14d | 2010-08-17 | 2010-08-30 | 63 |  | 2010-08-17 | 2010-08-30 | 14d | 2010-08-17 | 2010-08-30 | Dev; Arch; DevMgr |
| 66 | 3.6.1 | Beta QA Iteration |  | 14d | 2010-08-17 | 2010-08-30 |  |  | 2010-08-17 | 2010-08-30 | 14d | 2010-08-17 | 2010-08-30 | Dev; QA; QAMgr |
| 67 | 3.7 | Release Candidate | milestone | 0d | 2010-08-31 | 2010-08-31 | 65 |  | 2010-08-31 | 2010-08-31 | 13d | 2010-08-31 | 2010-08-31 | Dev; Arch; QA; QAMgr; PrjMgr; DevMgr |
| 68 | 4 | **Transition** |  | 64d | 2010-08-26 | 2010-10-28 |  |  | 2010-08-26 | 2011-10-28 | 429d | 2010-08-26 | 2010-10-28 | PrjMgr; MktMgr |
| 69 | 4.1 | **Public Infrastructure Creation** |  | 31d | 2010-08-26 | 2010-09-25 |  |  | 2010-08-26 | 2010-09-25 | 31d | 2010-08-26 | 2010-09-25 | Dev; DevMgr; Ed; MktMgr; Art |
| 70 | 4.1.1 | Site Visual Design |  | 31d | 2010-08-26 | 2010-09-25 |  |  | 2010-08-26 | 2010-09-25 | 31d | 2010-08-26 | 2010-09-25 | ArtMgr; BA; Ed; Art |
| 71 | 4.1.2 | Site SEO |  | 6d | 2010-08-26 | 2010-08-31 |  |  | 2010-08-26 | 2010-08-31 | 6d | 2010-08-26 | 2010-08-31 | Ed; MktMgr |
| 72 | 4.1.3 | Site Development |  | 12d | 2010-09-01 | 2010-09-12 |  |  | 2010-09-01 | 2010-09-12 | 12d | 2010-09-01 | 2010-09-12 | Dev; DevMgr; Art |
| 73 | 4.1.4 | Site Promotion |  | 5d | 2010-09-13 | 2010-09-17 | 72 |  | 2010-09-13 | 2010-09-17 | 5d | 2010-09-13 | 2010-09-17 | Dev; Arch |
| 74 | 4.2 | **Application Promotion** |  | 25d | 2010-09-13 | 2010-10-07 |  |  | 2010-09-13 | 2010-10-07 | 25d | 2010-09-13 | 2010-10-07 | Arch; DevMgr |
| 75 | 4.2.1 | Application Submission |  | 18d | 2010-09-13 | 2010-09-30 | 67 |  | 2010-09-13 | 2010-09-30 | 18d | 2010-09-13 | 2010-09-30 | Arch |
| 76 | 4.2.2 | Rejection Preparation |  | 18d | 2010-09-20 | 2010-10-07 |  |  | 2010-09-20 | 2010-10-07 | 18d | 2010-09-20 | 2010-10-07 | Dev |
| 77 | 4.3 | Licensing and Copyright |  | 29d | 2010-09-30 | 2010-10-28 |  |  | 2011-09-30 | 2011-10-28 | 29d | 2010-09-30 | 2010-10-28 | BA; Ed |
| 78 | 4.4 | Press Release |  | 11d | 2010-10-01 | 2010-10-11 |  |  | 2010-10-01 | 2010-10-01 | 1d | 2010-10-01 | 2010-10-11 |  |

Notes:
- 55: 03/08/2010 / Primary class development
- 56: 03/09/2010 / Designing and implementing User feedback. Implementing visual design metaphor. / 04/08/2010 / 3 Primary Screens constructed. Conducting initial user testing.
- 57: 03/03/2010 / Primary development of codebase. / 04/09/2010 / Production codebase started.
- 58: 03/10/2010 / Primary development of data structures / 04/09/2010 / Data divided into 2 partitions, System and User.
- 59: 03/10/2010 / Troubleshooting, leak management, performance improvement. / 04/08/2010 / Major performance issues discovered in Mobile Safari with custom webkit JS engine.
- 60: 03/01/2010 / Finalization of testing before alpha release.
- 61: 03/03/2010 / Review of usability study and last iteration.
- 62: 03/12/2010 / Creation of User documentation. Leverage Use Cases.
- 63: 03/12/2010 / Alpha release to testers.
- 64: 03/12/2010 / Iteration of Alpha test back to testers.
- 65: 03/03/2010 / Beta release to testers.
- 67: 03/03/2010 / Complete changes from Beta release. Release to larger testing audience.
- 68: 03/01/2010 / Rough outline of Transition tasks. Further elaboration upon reaching Construction Phase.
- 69: 03/12/2010 / Establish public hosting, DNS, technology vendors for public site.
- 70: 03/12/2010 / Leverage project visual design assets into web assets.
- 71: 03/12/2010 / Optimize site for aggregation on various public and social sites.
- 72: 03/12/2010 / Develop site framework and pages.
- 73: 03/12/2010 / Promote site.
- 74: 03/12/2010 / Finalize application and submit for approval.
- 75: 03/12/2010 / Prepare project for submission to iTunes Connect.
- 76: 03/12/2010 / Prepare for application rejection. Document code, eliminate bugs/leaks.
- 77: 03/12/2010 / Submit product logos, procedures and project for licensing, copyright and patenting.
- 78: 03/12/2010 / Write press release for publishing on public/social sites.
