# One Person Software Development Project

Schedule from GanttProject, 2010-01-21 to 2011-02-11, baseline: InitialDraft.
Team Axe, LLC
This is the project plan of the first software creation from Team Axe, LLC. / The project itself will follow the OpenUP software development process, and as such is divided into four phases: Inception, Elaboration, Construction and Transition. The purpose of the project is to create a compelling and well-developed software creation utilizing the resources of only a single developer. / Quarterly progress reports and other information can be viewed at the URL supplied with this document.

## Calendars

- Project calendar: Mon-Sun working.

## Resources

| Resource | Group |
| --- | --- |
| PrjMgr | Project Manager |
| DevMgr | Development Manager |
| ArtMgr | Graphic Design Manager |
| QAMgr | Quality Assurance Manager |
| MktMgr | Marketing Manager |
| Dev | Developer |
| Arch | Architect |
| Art | Graphic Designer |
| QA | Quality Assurance Tester |
| Ed | Editor |
| BA | Business Analyst |
| Con | External Consultant |
| Audio | Audio Engineer |

## Schedule

| ID | WBS | Task | Type | Duration | Start | Finish | Predecessors | Complete | Baseline start | Baseline finish | Baseline duration | Baseline 1 start | Baseline 1 finish | Resources |
| --- | --- | --- | --- | --- | --- | --- | --- | --- | --- | --- | --- | --- | --- | --- |
| 1 | 1 | **Inception** |  | 90d | 2010-01-21 | 2010-04-20 |  | 100% | 2010-01-21 | 2010-04-19 | 89d | 2010-01-21 | 2010-04-19 | PrjMgr [50%]; BA [50%] |
| 2 | 1.1 | **Project Definition** |  | 13d | 2010-01-21 | 2010-02-02 |  | 100% | 2010-01-21 | 2010-02-02 | 13d | 2010-01-21 | 2010-02-02 | PrjMgr [25%]; BA [10%] |
| 3 | 1.1.1 | Project Scope Determination |  | 1d | 2010-01-21 | 2010-01-21 |  | 100% | 2010-01-21 | 2010-01-21 | 1d | 2010-01-21 | 2010-01-21 | DevMgr [25%]; PrjMgr [50%]; QAMgr [10%]; BA [50%]; ArtMgr [20%]; MktMgr [10%] |
| 4 | 1.1.2 | Vision Statement |  | 2d | 2010-02-01 | 2010-02-02 | 3 | 100% | 2010-02-01 | 2010-02-02 | 2d | 2010-02-01 | 2010-02-02 | DevMgr; PrjMgr; BA; MktMgr |
| 5 | 1.2 | Initial Requirements |  | 12d | 2010-02-10 | 2010-02-21 |  | 100% | 2010-02-10 | 2010-02-21 | 12d | 2010-02-10 | 2010-02-21 | BA |
| 6 | 1.3 | Market Research |  | 5d | 2010-02-12 | 2010-02-16 |  | 100% |  |  |  | 2010-02-12 | 2010-02-16 | PrjMgr |
| 7 | 1.4 | **Use Case Creation** |  | 19d | 2010-02-12 | 2010-03-02 |  | 100% | 2010-02-12 | 2010-03-02 | 19d | 2010-02-12 | 2010-03-02 | PrjMgr; BA |
| 8 | 1.4.1 | Use Case Template Creation |  | 12d | 2010-02-12 | 2010-02-23 |  | 100% | 2010-02-12 | 2010-02-12 | 1d | 2010-02-12 | 2010-02-12 | BA |
| 9 | 1.4.2 | Use Case Task Determination |  | 3d | 2010-02-22 | 2010-02-24 | 5 | 100% | 2010-02-22 | 2010-02-24 | 3d | 2010-02-22 | 2010-02-24 | BA |
| 10 | 1.4.3 | Use Case Drafts |  | 6d | 2010-02-25 | 2010-03-02 | 8, 9 | 100% | 2010-02-25 | 2010-03-02 | 6d | 2010-02-25 | 2010-03-02 | Dev; BA |
| 11 | 1.5 | Architectural Feasibility |  | 6d | 2010-02-23 | 2010-02-28 |  | 100% | 2010-02-23 | 2010-02-28 | 6d | 2010-02-23 | 2010-02-28 | DevMgr; Dev; Arch |
| 12 | 1.6 | **Initial Documentation** |  | 33d | 2010-02-22 | 2010-03-26 | 5 | 100% | 2010-02-28 | 2010-03-26 | 27d | 2010-02-22 | 2010-03-14 | PrjMgr; BA; Ed |
| 13 | 1.6.1 | Software Design Document Creation |  | 15d | 2010-02-22 | 2010-03-08 |  | 100% | 2010-02-28 | 2010-03-04 | 5d | 2010-02-28 | 2010-03-14 | BA; Ed |
| 14 | 1.6.2 | Document Templates Creation |  | 4d | 2010-03-02 | 2010-03-05 |  | 100% | 2010-03-02 | 2010-03-05 | 4d | 2010-03-02 | 2010-03-05 | BA; Ed |
| 15 | 1.6.3 | Data Research |  | 21d | 2010-03-06 | 2010-03-26 | 14 | 100% | 2010-03-06 | 2010-03-26 | 21d | 2010-03-06 | 2010-03-26 | Dev [10%]; BA [30%]; Ed [30%] |
| 16 | 1.7 | **Technological Familiarization** |  | 45d | 2010-03-07 | 2010-04-20 |  | 100% | 2010-03-13 | 2010-04-06 | 25d | 2010-03-07 | 2010-04-06 | DevMgr; Arch |
| 17 | 1.7.1 | Technology Selection |  | 3d | 2010-03-07 | 2010-03-09 |  | 100% |  |  |  | 2010-03-07 | 2010-03-09 | DevMgr; PrjMgr; Arch |
| 18 | 1.7.2 | Developer Licensing |  | 7d | 2010-03-07 | 2010-03-13 |  | 100% |  |  |  | 2010-03-07 | 2010-03-13 | DevMgr |
| 19 | 1.7.3 | Objective-C Training |  | 39d | 2010-03-13 | 2010-04-20 |  | 100% | 2010-03-13 | 2010-04-06 | 25d | 2010-03-13 | 2010-04-06 | DevMgr; Dev; Arch |
| 20 | 1.7.4 | Development Environment Setup |  | 12d | 2010-03-13 | 2010-03-24 |  | 100% | 2010-03-13 | 2010-03-14 | 2d | 2010-03-13 | 2010-03-14 | Dev; Arch |
| 21 | 1.7.5 | Toolchain |  | 25d | 2010-03-13 | 2010-04-06 |  | 100% |  |  |  |  |  | Arch |
| 22 | 1.8 | Project Codebase Creation |  | 41d | 2010-03-10 | 2010-04-19 |  | 100% | 2010-03-10 | 2010-04-19 | 41d | 2010-03-10 | 2010-04-19 | Dev; Arch |
| 23 | 1.9 | **Initial Visual Design** |  | 37d | 2010-03-12 | 2010-04-17 |  | 100% |  |  |  |  |  | ArtMgr; Art |
| 24 | 1.9.1 | Determine Design Metaphor |  | 18d | 2010-03-12 | 2010-03-29 |  | 100% |  |  |  |  |  | Arch; ArtMgr; Art |
| 25 | 1.9.2 | Visual Assets Prototypes |  | 29d | 2010-03-20 | 2010-04-17 |  | 100% |  |  |  |  |  | Art |
| 26 | 1.10 | Project Timeline |  | 6d | 2010-03-20 | 2010-03-25 |  | 100% |  |  |  |  |  | PrjMgr |
| 27 | 1.11 | Documentation Workflow Finalization | milestone | 0d | 2010-03-20 | 2010-03-20 |  | 100% | 2010-03-20 | 2010-03-20 | 30d | 2010-03-20 | 2010-03-20 | BA; Ed |

Notes:
- 1: 03/01/2010 / Inception Phase of project lasting throughout first quarter. Familiarization with technology and feasibility. / 03/06/2010 / Expansion of Technological Familiarization to include Technology Selection and Developer Licensing. / 03/12/2010 / Creation of Initial Visual Design task. Added metaphor and process tasks. Added Project Timeline Task. / 04/19/2010 / Most Inception tasks complete. Objective-C training going more slowly than anticipated. In response, Objective-C training task added to all phases of project. / 05/30/2010 / Inception Complete.
- 2: 03/01/2010 / Outline scope of project. Begin Software Design Doc.
- 3: 03/01/2010 / Determine general scope of software and ability to execute. / 03/12/2010 / Determined limited platform choice of only iPhone production. / 04/19/2010 / Further limitations in platform choice. No native iPad support in first release. iOS 3 and above support given to difficulty in aquiring iOS 2 hardware.
- 4: 03/01/2010 / Prepare vision statement to prevent scope creep and outline purpose of software. / 03/12/2010 / Vision statement developed to focus development effort.
- 5: 03/05/2010 / Determine software requirements. / 03/12/2010 / Determined application limited to 4 screens at maximum in order to focus development effort on 4 discrete functionalities.
- 6: 02/12/2010 / Research market for pre-existing product fulfilling requirements. / 03/12/2010 / Conducted extensive market research. No product in Apple Marketplace or overall software market that meets Use Cases. / 04/19/2010 / Continued research shows no compelling social networking component either.
- 7: 02/12/2010 / Create set of Use Cases to refine what software should deliver.
- 8: 02/12/2010 / Determine format of Use Cases. / 03/12/2010 / Format and template of Use Cases created. Creation took longer than expected. End date increased by 2 weeks.
- 9: 02/12/2010 / Determine high-level set of functionality that will be achieved by Use Cases. / 03/12/2010 / Final set of product functionality set. Use Cases written to reflect this.
- 10: 02/12/2010 / Create initial set of Use Case drafts before template completion. / 03/12/2010 / Use Cases of 4 primary functionality drafts completed. One feature under consideration for removal. / 04/19/2010 / Use Cases reduced to 3 primary functionality paths.
- 11: 02/25/2010 / Study ability to execute project on platform without any knowledge of platform. / 03/12/2010 / Developer background with C/C++ makes Objective C acclimation possible. Project feasibility granted.
- 12: 2/20/2010 / Create initial set of documentation to support development effort.
- 13: 02/23/2010 / Create Software Design Doc to solidify architectural decisions. / 03/12/2010 / Software Design Document framework completed with all sections drafted. / 03/30/2010 / Final Draft of Design doc completed. Each section will be added to as development continues. As such, Software Design Doc update task added to each phase.
- 14: 02/23/2010 / Determine/Create document template types for business, technical writing and documentation. / 03/12/2010 / Document templates for all project documentation determined. Open Office chosen as exclusive tool.
- 15: 02/28/2010 / Begin research into system data for User Profile creation. / 03/12/2010 / Product reference material and data research determined to be greater than Inception phase endeavor. Will progress throughout Elaboration and Construction. / 04/09/2010 / Initial Data collection and archival completed.
- 16: 03/01/2010 / Begin process of familiarization with XCode, Objective-C and Apple App Store/Developer resources.
- 17: 03/01/2010 / Begin research into development toolchain (IDE, testing, debugging, prototyping). / 03/06/2010 / Determine scope of project to include platforms outside iPhone OS. / 03/12/2010 / Determined need for research into UIWebView vs. CoreGraphics display.
- 18: 03/01/2010 / Realized necessity of testing on actual hardware (performance). Apple Developer license needed for development effort. / 03/12/2010 / Applying for Apple Developer Program. / 04/08/2010 / Acceptance to Apple Developer Program.
- 19: 03/10/2010 / Began Stanford IPhone Developer online course. Intending viewing all course videos and completing each assignment. / 03/12/2010 / Underestimated time. Goal extended 2 weeks. / 04/04/2010 / Need for ongoing training identified. Entry level Apple tutorials/documentation finished. / 04/09/2010 / Research into Apple documentation/education complete.
- 20: 03/10/2010 / Creation of development environment/workstation. Selection of IDE, placement of workplace, backup/change control procedures. / 03/12/2010 / Project setup completion. Test Unit Tests created. Need testable use cases. / 04/08/2010 / Apple certificates/provisioning profiles received. Test devices provisioned.
- 21: 03/03/2010 / Finalize procedures and workflows in generating content for development/archival. / 03/12/2010 / Toolchain finalized.
- 22: 03/08/2010 / Creation of Proof of Concept XCode project. / 03/12/2010 / Project filesystem hierarchy established. Navigation hierarchy completed. / 04/08/2010 / Project codebase successfully tested on actual devices.
- 24: 03/12/2010 / Determine guiding design metaphor for UI. / 04/04/2010 / Visual design metaphor for UI identified and tested. Design for major project deliverable still undergoing revision. / 04/09/2010 / Major project deliverable initial visual design finalized.
- 25: 03/12/2010 / Determine ability to generate art assets in acceptable timeframes. / 04/08/2010 / Prototype visual assets exported and pushed to test devices.
- 26: 03/12/2010 / Develop Gantt Chart. For project. Utilize Open Office Calc public domain Gantt Chart Template. / 04/01/2010 / Gantt Chart first revision complete. Inception Phase complete.
- 27: 03/01/2010 / Create rough workflow guidelines for project documentation creation. / 3/12/2010 / Project documentation types determined. Software Design Doc, Vision Doc, System/User Data Model Doc, UI Model Doc, Assest Licensing Doc, Use Cases. / 05/30/2010 / All project Documentation completed.

| ID | WBS | Task | Type | Duration | Start | Finish | Predecessors | Complete | Baseline start | Baseline finish | Baseline duration | Baseline 1 start | Baseline 1 finish | Resources |
| --- | --- | --- | --- | --- | --- | --- | --- | --- | --- | --- | --- | --- | --- | --- |
| 28 | 2 | **Elaboration** |  | 148d | 2010-03-03 | 2010-07-28 |  | 96% | 2010-03-03 | 2010-06-16 | 106d | 2010-04-19 | 2010-06-16 | DevMgr [10%]; PrjMgr [25%]; Arch [5%]; BA [25%]; ArtMgr [20%] |
| 29 | 2.1 | Use Case Model Creation |  | 49d | 2010-03-03 | 2010-04-20 | 10 | 100% | 2010-03-03 | 2010-03-17 | 15d | 2010-03-03 | 2010-03-20 | Dev; BA |
| 30 | 2.2 | **Ongoing Training and Documentation** |  | 106d | 2010-03-03 | 2010-06-16 |  | 100% |  |  |  |  |  |  |
| 31 | 2.2.1 | Objective C training - Stanford Class |  | 106d | 2010-03-03 | 2010-06-16 |  | 100% |  |  |  |  |  |  |
| 32 | 2.2.2 | Software Design Doc revisions |  | 32d | 2010-05-05 | 2010-06-05 |  | 100% |  |  |  |  |  | DevMgr |
| 33 | 2.3 | Finalize Document Templates |  | 49d | 2010-03-06 | 2010-04-23 | 14 | 100% | 2010-03-06 | 2010-03-23 | 18d | 2010-03-03 | 2010-03-20 | Ed |
| 34 | 2.4 | **Initial Usability** |  | 59d | 2010-04-01 | 2010-05-29 |  | 72% |  |  |  |  |  | QAMgr; Con |
| 35 | 2.4.1 | Aquire Usability Resource |  | 37d | 2010-04-01 | 2010-05-07 |  | 50% |  |  |  |  |  | QAMgr |
| 36 | 2.4.2 | Review Usability Findings | milestone | 0d | 2010-04-30 | 2010-04-30 |  | 100% |  |  |  |  |  | QAMgr |
| 37 | 2.5 | Software Development Plan Creation |  | 17d | 2010-04-19 | 2010-05-05 |  | 100% | 2010-04-19 | 2010-05-05 | 17d | 2010-04-19 | 2010-05-05 | DevMgr; Dev; Arch |
| 38 | 2.6 | **Finalize Project Environments** |  | 21d | 2010-04-19 | 2010-05-09 |  | 100% | 2010-04-19 | 2010-05-06 | 18d | 2010-04-19 | 2010-05-09 | Arch |
| 39 | 2.6.1 | Finalize Dev Environment |  | 7d | 2010-04-19 | 2010-04-25 |  | 100% | 2010-04-19 | 2010-04-25 | 7d | 2010-04-19 | 2010-04-25 | Arch |
| 40 | 2.6.2 | Finalize Art Environment |  | 18d | 2010-04-22 | 2010-05-09 |  | 100% | 2010-04-19 | 2010-05-06 | 18d | 2010-04-22 | 2010-05-09 | Arch; Art |
| 41 | 2.6.3 | Finalize Test Environment |  | 17d | 2010-04-23 | 2010-05-09 |  | 100% | 2010-04-19 | 2010-05-05 | 17d | 2010-04-23 | 2010-05-09 | Arch; QA |
| 42 | 2.7 | **Visual Design Finalization** |  | 22d | 2010-04-29 | 2010-05-20 |  | 100% | 2010-04-29 | 2010-05-20 | 22d | 2010-04-29 | 2010-05-20 | ArtMgr; Art |
| 43 | 2.7.1 | Finalize Art Workflow |  | 22d | 2010-04-29 | 2010-05-20 |  | 100% | 2010-04-29 | 2010-05-20 | 22d | 2010-04-29 | 2010-05-20 | Arch; Art |
| 44 | 2.7.2 | Finalize Initial Art Assets |  | 9d | 2010-04-29 | 2010-05-07 |  | 100% | 2010-04-29 | 2010-05-07 | 9d | 2010-04-29 | 2010-05-07 | Art |
| 45 | 2.8 | Proof of Concept |  | 15d | 2010-05-03 | 2010-05-17 |  | 100% | 2010-05-03 | 2010-05-17 | 15d | 2010-05-03 | 2010-05-17 | DevMgr; PrjMgr; Arch; ArtMgr |
| 46 | 2.9 | **Create Software Development Model** |  | 64d | 2010-05-06 | 2010-07-08 | 37 | 100% | 2010-05-06 | 2010-06-05 | 31d | 2010-05-06 | 2010-06-05 | DevMgr; Dev; Arch |
| 47 | 2.9.1 | Technology Research |  | 62d | 2010-05-06 | 2010-07-06 |  | 100% | 2010-05-06 | 2010-06-05 | 31d | 2010-05-06 | 2010-06-05 | Dev; Arch |
| 48 | 2.9.2 | Data Research |  | 31d | 2010-05-06 | 2010-06-05 |  | 100% | 2010-05-06 | 2010-06-05 | 31d | 2010-05-06 | 2010-06-05 | Dev |
| 49 | 2.9.3 | Class Model |  | 64d | 2010-05-06 | 2010-07-08 |  | 100% | 2010-05-06 | 2010-06-04 | 30d | 2010-05-06 | 2010-05-23 | Arch |
| 50 | 2.9.4 | ER Model |  | 14d | 2010-05-20 | 2010-06-02 |  | 100% | 2010-05-06 | 2010-05-19 | 14d | 2010-05-06 | 2010-05-19 | Arch |
| 51 | 2.10 | Functional Prototype |  | 57d | 2010-05-18 | 2010-07-13 | 45 | 100% | 2010-05-18 | 2010-05-18 | 30d | 2010-05-18 | 2010-05-18 | DevMgr; Dev; Arch |
| 52 | 2.11 | Prototype Real World Trial | milestone | 0d | 2010-07-21 | 2010-07-21 | 51 | 75% |  |  |  |  |  | BA |

Notes:
- 28: 03/01/2010 / Take decisions and templates from Inception phase and complete preparation work for Construction. / 03/12/2010 / Realized need for Usability expertise. Added task. / 04/08/2010 / Ongoing Training and Documentation tasks added. / 04/19/2010 / First external resource requested. / 06/13/2010 / Happy Birthday to me! Significant setback in visualization. Dates adjusted. / 07/20/2010 / Aside from visualization and usability setbacks, Elaboration phase complete.
- 29: 03/01/2010 / Determine best doctype and template doctype for Use Cases. / 04/08/2010 / 3 Primary Use Case scenarios developed. System setup Use Case need identified. / 04/09/2010 / System setup Use Case developed. / 05/01/2010 / Initial Use Cases finished. Awaiting Usability analysis. / 05/30/2010 / Use Case iteration moved to Construction Phase.
- 31: 04/08/2010 / Taking Stanford Online Classes. 1st set of assignments complete. / 05/26/2010 / Most Stanford Class assignments complete. All videos completed. Training iteration moved to Construction Phase.
- 32: 03/03/2010 / Complete structure and rough draft of final Software Design Doc. / 03/12/2010 / Sections finalized. / 04/08/2010 / Task moved under Ongoing Training and documentation. / 05/26/2010 / Continued revisions to calculations.
- 33: 03/12/2010 / Finalize documentation decisions. Entirety of project documentation created with open source tools. / All documentation - Open Office / All bitmap asset generation - GIMP / All vector asset generation - Inkscape / 04/08/2010 / SVG workflow/structure identified for parsing. Art workflow now seemless to code consumption. / 05/26/2010 / All document and asset templates complete.
- 34: 03/30/2010 / Usability Expert consulted. Will contract initial Usability study to external resource.
- 35: 03/30/2010 / Gathering Use Cases and Software Design Doc for review by Usability Expert. / 04/09/2010 / NDA sent to Usability Expert. / 04/19/2010 / NDA returned. Project profile/Use cases sent. Timeline increased. / 05/26/2010 / Awaiting Usability Expert response.
- 36: 04/19/2010 / Project profile materials sent to Usability resource. / 05/26/2010 / Awaiting Usability results. Move iteration to Construction Phase.
- 37: 03/03/2010 / Enhance Software Design Doc section to include specific development decisions. / 05/26/2010 / Software vision and design doc synced.
- 38: 03/10/2010 / Finalize development workspace including filesystem naming conventions, backup procedures and workflow facilitation.
- 39: 03/01/2010 / Complete creation of POC XCode project with general build targets, Unit Testing and project structure. / 03/12/2010 / Completed build targets, comment syntax, doxygen support. / 05/01/2010 / Development environment tool familiarization and profile setup complete (Instruments, XCode, etc.). / 05/26/2010 / Finalized Project filesystem structure.
- 40: 03/03/2010 / Finalized filesystem conventions and tool settings/preferences. / Raster - GIMP workspace, high resolution photography, high resolution assets stored, exported to low resolution iPhone assets. / Vector - Inkscape workspace, exported to low resolution iPhone assets. / Familiarization with Inkscape-specific svg file format. / 04/08/2010 / Codebase partitioned to accept art assests direct from Art workflow. / 05/26/2010 / Art toolchain finalized. 1 remaining issue with asset type.
- 41: 03/10/2010 / Setup of SenTestingKit with default Unit Tests included in build process. / 04/08/2010 / SenTesting initial test cases created and merged with Build Process. / 05/26/2010 / Testing suites difficult to setup as familiarization with environment is still ongoing. Add'l class structure fluctuations make constructing test cases difficult. / 7/8/2010 / Test cases complete, but given flux of class creations, unit testing is difficult. UIAutomation investigation underway as well.
- 42: 03/07/2010 / Finalize design metaphor and visual direction of project.
- 43: 03/09/2010 / Determine best-practices in Art development environment and workflow. / 05/26/2010 / All initial prototype art assets generated with acceptible workflow.
- 44: 03/08/2010 / Create first batch of prototype art assets for Proof of Concept. / 05/26/2010 / All initial art assets completed and installed into codebase.
- 45: 03/03/2010 / Create Proof of Concept iPhone app proving out ability to create application and test initial screen layouts and design decisions. / 05/26/2010 / Proof of Concept feature complete (without data retention). However, performance is unacceptible. / 06/13/2010 / Proof of Concept completed, but primary development visualization deliverable performance is suboptimal ~15fps. A new, lower-level visualization engine (and workflow to generate appropriate assets) is needed.
- 46: 03/02/2010 / Design the principle software systems of the project. / 04/08/2010 / Methods for generating Data/ER/Class models determined.
- 47: 03/02/2010 / Determine best practices and most efficient frameworks for use on Apple Devices. / 04/08/2010 / Apple HIG, Best practices and Programming guides reviewed. / 05/26/2010 / Most apple UI interfaces understood and implemented. CoreData and high-performing visualization still unknown. / 06/13/2010 / Visualization utilizing UIWebView suboptimal. Research into CoreGraphics visualization underway.
- 48: 03/01/2010 / Continuing research into software content and User customization. / 04/08/2010 / Core Data chosen as Model Framework over custom SQLite implementation. / 05/26/2010 / Determined best subset of data to include. Data asset retrieval (public domain licensing) will begin. / 08/06/2010 / Data retrieval nearing completion. Most assets found in public domain. Prototype datasets acceptible. Will finish data retrieval for production product.
- 49: 03/01/2010 / Construct Class Model diagram for high-level relationship determinations. / 04/08/2010 / Initial Class implementations from ER/Model work initiated. / 05/26/2010 / Initial design for primary deliverable visualization is unusable. Must re-write using more lower-level structures. / 06/13/2010 / Class models for most system structures complete. However, view models need rewrite. / 07/20/2010 / Class models complete with exception of view models. / 08/07/2010 / Visualization routine re-written with CoreGraphics and SVG backend-import. 60fps attainable on both original / iPhone models and current generation iPhones. @2x asset generation for UI elements in iPhone 4/iPad underway.
- 50: 03/01/2010 / Create entity-relationship diagram for datastructures to hold both System data and User data. / 04/08/2010 / Basic Visual models generated via Eclipse-based ER software. CoreData model will be generated via XCode. / 05/26/2010 / Eclipse-based ER diagramming not efficient with build process. Abandoning after final visual ER generation. / 07/20/2010 / Begining CoreData modelling.
- 51: 03/01/2010 / Create functional Prototype for usability testing based upon Proof of Concept. / 05/26/2010 / Visualization performance is unacceptible. Delaying Prototype delivery date by 1 month. / 07/20/2010 / View approach decided. Rough design applied to functional prototype.
- 52: 08/14/2010 / Real world prototype testing underway. Performance differences between original iPhone and current / generation iPhone acceptable. Need to attain iPad and 1st generation iPod touch for support.

| ID | WBS | Task | Type | Duration | Start | Finish | Predecessors | Complete | Baseline start | Baseline finish | Baseline duration | Baseline 1 start | Baseline 1 finish | Resources |
| --- | --- | --- | --- | --- | --- | --- | --- | --- | --- | --- | --- | --- | --- | --- |
| 53 | 3 | **Construction** |  | 238d | 2010-05-21 | 2011-01-13 |  | 10% | 2010-06-06 | 2010-09-12 | 99d | 2010-06-06 | 2010-09-12 | DevMgr; PrjMgr |
| 54 | 3.1 | **Public Presence Construction** |  | 71d | 2010-05-21 | 2010-07-30 |  | 75% |  |  |  |  |  |  |
| 55 | 3.1.1 | Blog Creation |  | 9d | 2010-05-21 | 2010-05-29 |  | 75% |  |  |  |  |  | Ed |
| 56 | 3.1.2 | Business Entity Creation |  | 26d | 2010-07-05 | 2010-07-30 |  | 75% |  |  |  |  |  | BA |
| 57 | 3.2 | **Visual Design Finalization** |  | 93d | 2010-05-27 | 2010-08-27 |  | 29% |  |  |  |  |  | ArtMgr |
| 58 | 3.2.1 | Interface Asset Generation |  | 93d | 2010-05-27 | 2010-08-27 |  | 25% |  |  |  |  |  | Art |
| 59 | 3.2.2 | Project Asset Generation |  | 62d | 2010-06-05 | 2010-08-05 |  | 35% |  |  |  |  |  |  |
| 60 | 3.3 | Usability Review |  | 47d | 2010-05-30 | 2010-07-15 | 36 |  |  |  |  |  |  | BA |
| 61 | 3.4 | **Audio Engineering** |  | 88d | 2010-09-20 | 2010-12-16 |  | 3% |  |  |  |  |  | ArtMgr [10%]; Audio |
| 62 | 3.4.1 | Theme Composition |  | 82d | 2010-09-20 | 2010-12-10 |  | 5% |  |  |  |  |  | Audio |
| 63 | 3.4.2 | Effects Engineering |  | 61d | 2010-10-17 | 2010-12-16 |  | 2% |  |  |  |  |  | Audio |
| 64 | 3.5 | **Primary Development** |  | 119d | 2010-07-09 | 2010-11-04 | 46 | 8% | 2010-06-06 | 2010-09-04 | 91d | 2010-06-06 | 2010-08-26 | DevMgr; Dev; Arch |
| 65 | 3.5.1 | Interface Development |  | 119d | 2010-07-09 | 2010-11-04 |  | 15% | 2010-06-15 | 2010-09-04 | 82d | 2010-06-06 | 2010-08-26 | Dev; Art |
| 66 | 3.5.2 | Class Development |  | 105d | 2010-07-09 | 2010-10-21 |  | 10% | 2010-06-06 | 2010-08-19 | 75d | 2010-06-06 | 2010-08-19 | Dev |
| 67 | 3.5.3 | Data Development |  | 91d | 2010-07-09 | 2010-10-07 |  | 5% | 2010-06-27 | 2010-08-25 | 60d | 2010-06-06 | 2010-08-04 | Dev |
| 68 | 3.5.4 | Performance Development |  | 73d | 2010-07-09 | 2010-09-19 |  | 2% | 2010-07-07 | 2010-08-07 | 32d | 2010-06-25 | 2010-07-26 |  |
| 69 | 3.6 | Ongoing Training and Documentation |  | 137d | 2010-06-17 | 2010-10-31 |  | 15% |  |  |  |  |  |  |
| 70 | 3.7 | **Quality Assuarance** |  | 32d | 2010-08-17 | 2010-09-17 |  |  | 2010-07-15 | 2010-07-29 | 15d | 2010-07-15 | 2010-07-29 | QA; QAMgr |
| 71 | 3.7.1 | Final Usability |  | 32d | 2010-08-17 | 2010-09-17 |  |  | 2010-07-15 | 2010-07-29 | 15d | 2010-07-15 | 2010-07-29 | BA; Con |
| 72 | 3.8 | User Documentation |  | 17d | 2010-08-30 | 2010-09-15 |  |  | 2010-07-30 | 2010-08-15 | 17d | 2010-07-30 | 2010-08-15 | PrjMgr; QAMgr |
| 73 | 3.9 | **Alpha Release** |  | 62d | 2010-10-17 | 2010-12-17 |  |  | 2010-08-01 | 2010-08-16 | 16d | 2010-08-01 | 2010-08-16 | DevMgr; Dev; Arch |
| 74 | 3.9.1 | Gather Tester Information |  | 62d | 2010-10-17 | 2010-12-17 |  |  |  |  |  |  |  | BA |
| 75 | 3.9.2 | Alpha QA Iteration |  | 16d | 2010-11-15 | 2010-11-30 | 64 |  | 2010-08-01 | 2010-08-16 | 16d | 2010-08-01 | 2010-08-16 | Dev; QA; QAMgr |
| 76 | 3.10 | **Beta Release** |  | 14d | 2010-12-18 | 2010-12-31 | 73 |  | 2010-08-17 | 2010-08-30 | 14d | 2010-08-17 | 2010-08-30 | DevMgr; Dev; Arch |
| 77 | 3.10.1 | Gather Add'l Tester Information |  | 6d | 2010-12-18 | 2010-12-23 |  |  |  |  |  |  |  | BA |
| 78 | 3.10.2 | Beta QA Iteration |  | 14d | 2010-12-18 | 2010-12-31 | 75 |  | 2010-08-17 | 2010-08-30 | 14d | 2010-08-17 | 2010-08-30 | Dev; QA; QAMgr |
| 79 | 3.11 | Release Candidate | milestone | 0d | 2011-01-01 | 2011-01-01 | 78 |  | 2010-08-31 | 2010-08-31 | 13d | 2010-08-31 | 2010-08-31 | DevMgr; Dev; PrjMgr; Arch; QA; QAMgr |

Notes:
- 53: 02/01/2010 / Take assets/code generated in elaboration and build functional product. / 03/12/2010 / Added Visual design development/generation path. / 05/26/2010 / Added Public Presence tasks. / 07/20/2010 / Added Audio Engineering, delays to construction, delay to Usability.
- 55: 05/26/2010 / Entertaining a blog about the process. Transition blog to fully-fledged public presence. / 06/13/2010 / First blog entry posted under old blog-site. / 07/08/2010 / Add'l updates written. / 07/20/2010 / Initial Blog and site branding complete. Iterations needed.
- 56: 05/26/2010 / Decision to create LLC entity for purpose of production of this project. / 06/13/2010 / LLC research underway. / 06/20/2010 / LLC creation documentation. / 07/08/2010 / Articles of Organization received from state of MO. TeamAxe, LLC. created. / 7/20/2010 / Apple Developer account transferred from Adam Axe entity to TeamAxe, LLC. entity.
- 58: 04/08/2010 / Photography completed. Asset generation (lighting, cropping, resizing) commencing. / 07/28/2010 / Actual interface development underway, entry screen iterations commencing.
- 59: 04/08/2010 / Asset prototypes constructed. Performance issues noticed. / 07/28/2010 / Visualization issues corrected. Asset toolchain updated. Asset generation commencing.
- 60: 05/26/2010 / Awaiting Usability results. / 06/13/2010 / Still awaiting Usabilty Resource response. Delay of 1 month. / 07/20/2010 / Still no response from Usability Resource after repeated communication attempts.
- 61: 07/20/2010 / Realized the need for ambient sound effects and possibly a theme. Began research into audio design of peer software.
- 62: 07/20/2010 / Previously composed pieces reviewed. Possible candidates identified.
- 64: 03/08/2010 / Primary class development / 06/13/2010 / Primary visual development deliverable unusable in current form. Undergoing lower-level rewrite to attain 60fps. Extension of 1 month to project for research.
- 65: 03/09/2010 / Designing and implementing User feedback. Implementing visual design metaphor. / 04/08/2010 / 3 Primary Screens constructed. Conducting initial user testing.
- 66: 03/03/2010 / Primary development of codebase. / 04/09/2010 / Production codebase started.
- 67: 03/10/2010 / Primary development of data structures / 04/09/2010 / Data divided into 2 partitions, System and User.
- 68: 03/10/2010 / Troubleshooting, leak management, performance improvement. / 04/08/2010 / Major performance issues discovered in Mobile Safari with custom webkit JS engine.
- 69: 06/20/2010 / WWDC10 Videos downloaded. Training ongoing.
- 70: 03/01/2010 / Finalization of testing before alpha release.
- 71: 03/03/2010 / Review of usability study and last iteration. / 06/13/2010 / Usability has not become due to non-response from resource. Delaying 1 month. / 07/20/2010 / No response from Usability Resource. Delaying 1 month. Troubling.
- 72: 03/12/2010 / Creation of User documentation. Leverage Use Cases. / 06/13/2010 / Must focus on visualization rewrite. Documentation delayed.
- 73: 03/12/2010 / Alpha release to testers.
- 74: 07/20/2010 / Identified need of Alpha Testers and process.
- 75: 03/12/2010 / Iteration of Alpha test back to testers.
- 76: 03/03/2010 / Beta release to testers.
- 77: 07/20/2010 / Identified need of Beta Testers and process.
- 79: 03/03/2010 / Complete changes from Beta release. Release to larger testing audience.

| ID | WBS | Task | Duration | Start | Finish | Predecessors | Baseline start | Baseline finish | Baseline duration | Baseline 1 start | Baseline 1 finish | Resources |
| --- | --- | --- | --- | --- | --- | --- | --- | --- | --- | --- | --- | --- |
| 80 | 4 | **Transition** | 145d | 2010-09-20 | 2011-02-11 |  | 2010-08-26 | 2011-10-28 | 429d | 2010-08-26 | 2010-10-28 | PrjMgr; MktMgr |
| 81 | 4.1 | **Public Infrastructure Creation** | 28d | 2010-09-20 | 2010-10-17 |  | 2010-08-26 | 2010-09-25 | 31d | 2010-08-26 | 2010-09-25 | DevMgr; Dev; Art; MktMgr; Ed |
| 82 | 4.1.1 | Site Visual Design | 6d | 2010-09-20 | 2010-09-25 |  | 2010-08-26 | 2010-09-25 | 31d | 2010-08-26 | 2010-09-25 | BA; ArtMgr; Art; Ed |
| 83 | 4.1.2 | Site SEO | 6d | 2010-09-27 | 2010-10-02 |  | 2010-08-26 | 2010-08-31 | 6d | 2010-08-26 | 2010-08-31 | MktMgr; Ed |
| 84 | 4.1.3 | Site Development | 12d | 2010-10-01 | 2010-10-12 |  | 2010-09-01 | 2010-09-12 | 12d | 2010-09-01 | 2010-09-12 | DevMgr; Dev; Art |
| 85 | 4.1.4 | Site Promotion | 5d | 2010-10-13 | 2010-10-17 | 84 | 2010-09-13 | 2010-09-17 | 5d | 2010-09-13 | 2010-09-17 | Dev; Arch |
| 86 | 4.2 | **Application Promotion** | 18d | 2011-01-14 | 2011-01-31 | 79 | 2010-09-13 | 2010-10-07 | 25d | 2010-09-13 | 2010-10-07 | DevMgr; Arch |
| 87 | 4.2.1 | Application Submission | 18d | 2011-01-14 | 2011-01-31 | 79 | 2010-09-13 | 2010-09-30 | 18d | 2010-09-13 | 2010-09-30 | Arch |
| 88 | 4.2.2 | Rejection Preparation | 18d | 2011-01-14 | 2011-01-31 |  | 2010-09-20 | 2010-10-07 | 18d | 2010-09-20 | 2010-10-07 | Dev |
| 89 | 4.3 | Licensing and Copyright | 29d | 2010-10-29 | 2010-11-26 |  | 2011-09-30 | 2011-10-28 | 29d | 2010-09-30 | 2010-10-28 | BA; Ed |
| 90 | 4.4 | Press Release | 11d | 2011-02-01 | 2011-02-11 | 86 | 2010-10-01 | 2010-10-01 | 1d | 2010-10-01 | 2010-10-11 |  |

Notes:
- 80: 03/01/2010 / Rough outline of Transition tasks. Further elaboration upon reaching Construction Phase.
- 81: 03/12/2010 / Establish public hosting, DNS, technology vendors for public site.
- 82: 03/12/2010 / Leverage project visual design assets into web assets.
- 83: 03/12/2010 / Optimize site for aggregation on various public and social sites.
- 84: 03/12/2010 / Develop site framework and pages.
- 85: 03/12/2010 / Promote site.
- 86: 03/12/2010 / Finalize application and submit for approval.
- 87: 03/12/2010 / Prepare project for submission to iTunes Connect.
- 88: 03/12/2010 / Prepare for application rejection. Document code, eliminate bugs/leaks.
- 89: 03/12/2010 / Submit product logos, procedures and project for licensing, copyright and patenting.
- 90: 03/12/2010 / Write press release for publishing on public/social sites.
